How a schedule from MS Project changed from version to version. A marks actual dates.

## Version 1 (data date 2021-04-06, saved 2021-03-16, file lab4.mpp)

Note of the change: add labs

| ID | WBS | Task | Duration | Start | Finish | Predecessors | Complete | Total float | Constraint |
| --- | --- | --- | --- | --- | --- | --- | --- | --- | --- |
| 1 |  | Начало проекта | 0w | 2021-03-01 08:00 | 2021-03-01 08:00 |  |  | 5d |  |
| 2 | 2 | **Создание интерфейса** | 82.61d | 2021-03-09 09:00 A | 2021-07-06 14:50 | 1 | 32% | -11.57d |  |
| 3 | 2.1 | **Разработка дизайна интерфейса** | 25.62d | 2021-03-09 09:00 A | 2021-04-13 15:00 |  | 38% | 37.91d |  |
| 4 |  | Разработка 2D графических элементов | 3w | 2021-03-09 09:00 A | 2021-04-05 09:12 A |  | 100% |  | start no earlier than 2021-03-09 09:00 |
| 5 |  | Разработка 3D графичиских элементов | 2w | 2021-03-09 09:00 | 2021-03-23 11:00 | 4SS |  | 37.91d |  |
| 6 |  | Создание заставки | 3w | 2021-03-23 11:00 | 2021-04-13 15:00 | 5 |  | 37.91d |  |
| 7 |  | Программирование интерфейса | 1.5w | 2021-06-25 09:50 | 2021-07-06 14:50 | 3, 12 |  | -11.57d |  |
| 8 | 3 | **Построение базы объектов** | 92.1d | 2021-03-23 12:00 A | 2021-08-03 12:47 |  | 10% | 0.95d |  |
| 9 |  | Анализ и построение структуры базы объектов | 2w | 2021-03-23 12:00 A | 2021-04-13 15:00 |  | 80% | 2.95d |  |
| 10 |  | Программирование средств обработки базы объектов | 1.55w | 2021-04-23 12:49 | 2021-05-07 12:47 | 9 |  | 0.95d |  |
| 11 |  | Наполнение базы объектов | 12w | 2021-05-07 12:47 | 2021-08-03 12:47 | 10 |  | 0.95d |  |
| 12 | 4 | **Создание ядра GIS** | 75.11d | 2021-03-09 09:00 | 2021-06-25 09:50 |  |  | -11.57d |  |
| 13 |  | Анализ и проектирование ядра | 3.9w | 2021-03-09 09:00 | 2021-04-09 15:00 |  |  | -11.57d | start no earlier than 2021-03-09 08:00 |
| 14 |  | Создание модели ядра | 2.02w | 2021-04-09 15:00 | 2021-04-23 15:49 | 13 |  | -11.57d |  |
| 15 |  | Тестирование модели ядра | 0.25w | 2021-04-23 15:49 | 2021-04-26 17:49 | 14 |  | -11.57d |  |
| 16 |  | Создание рабочей версии ядра | 7.98w | 2021-04-26 17:49 | 2021-06-25 09:50 | 15 |  | -11.57d |  |
| 17 |  | Создание мультимедиа - наполнения | 6w | 2021-04-13 15:00 | 2021-05-28 13:00 | 3 |  | 46.93d |  |
| 18 |  | Создание справочной системы | 2w | 2021-07-13 17:50 | 2021-07-28 09:50 | 7 |  | 5.32d |  |
| 19 | 7 | **Создание руководства пользователя** | 26.94d | 2021-06-04 09:18 | 2021-07-13 17:50 | 7FS-10d |  | 0d |  |
| 20 |  | Разработка дизайна руководства | 1w | 2021-06-04 09:18 | 2021-06-16 12:06 |  |  |  | start no earlier than 2021-06-18 16:00 |
| 21 |  | Написание руководства пользователя | 3w | 2021-06-22 14:50 | 2021-07-13 17:50 | 20SS+2d |  | 0d |  |
| 22 | 8 | **Создание web - сайта и поддержка** | 23.6d | 2021-06-22 14:50 | 2021-07-26 10:38 |  |  | 0d |  |
| 23 |  | Разработка структуры сайта | 1d | 2021-06-22 14:50 | 2021-06-23 15:50 | 21SS |  | 0d |  |
| 24 |  | Разработка дизайна сайта | 1.3w | 2021-06-23 15:50 | 2021-07-02 17:38 | 23 |  | 0d |  |
| 25 |  | Наполнение сайта | 3w | 2021-07-02 17:38 | 2021-07-26 10:38 | 24 |  | 0d |  |
| 26 |  | Тестирование сайта | 2.44w | 2021-07-19 10:38 | 2021-08-04 12:25 | 22FS-1w |  | 0d | start no earlier than 2021-07-13 09:00 |
| 27 |  | Сдача сайта в эксплуатацию | 0w | 2021-08-04 12:25 | 2021-08-04 12:25 | 26 |  | 0d |  |
| 28 | 11 | **Совещание** | 91.12d | 2021-03-03 09:00 | 2021-07-14 10:00 |  |  | 15.3d |  |
| 29 |  | Совещание 1 | 1h | 2021-03-03 09:00 | 2021-03-03 10:00 |  |  | 106.3d | start no earlier than 2021-03-03 08:00 |
| 30 |  | Совещание 2 | 1h | 2021-03-10 09:00 | 2021-03-10 10:00 |  |  | 102.3d | start no earlier than 2021-03-10 08:00 |
| 31 |  | Совещание 3 | 1h | 2021-03-17 09:00 | 2021-03-17 10:00 |  |  | 97.3d | start no earlier than 2021-03-17 08:00 |
| 32 |  | Совещание 4 | 1h | 2021-03-24 09:00 | 2021-03-24 10:00 |  |  | 92.3d | start no earlier than 2021-03-24 08:00 |
| 33 |  | Совещание 5 | 1h | 2021-03-31 09:00 | 2021-03-31 10:00 |  |  | 87.3d | start no earlier than 2021-03-31 08:00 |
| 34 |  | Совещание 6 | 1h | 2021-04-07 09:00 | 2021-04-07 10:00 |  |  | 82.3d | start no earlier than 2021-04-07 08:00 |
| 35 |  | Совещание 7 | 1h | 2021-04-14 09:00 | 2021-04-14 10:00 |  |  | 77.3d | start no earlier than 2021-04-14 08:00 |
| 36 |  | Совещание 8 | 1h | 2021-04-21 09:00 | 2021-04-21 10:00 |  |  | 72.3d | start no earlier than 2021-04-21 08:00 |
| 37 |  | Совещание 9 | 1h | 2021-04-28 09:00 | 2021-04-28 10:00 |  |  | 67.3d | start no earlier than 2021-04-28 08:00 |
| 38 |  | Совещание 10 | 1h | 2021-05-05 09:00 | 2021-05-05 10:00 |  |  | 63.3d | start no earlier than 2021-05-05 08:00 |
| 39 |  | Совещание 11 | 1h | 2021-05-12 09:00 | 2021-05-12 10:00 |  |  | 59.3d | start no earlier than 2021-05-12 08:00 |
| 40 |  | Совещание 12 | 1h | 2021-05-19 09:00 | 2021-05-19 10:00 |  |  | 54.3d | start no earlier than 2021-05-19 08:00 |
| 41 |  | Совещание 13 | 1h | 2021-05-26 09:00 | 2021-05-26 10:00 |  |  | 49.3d | start no earlier than 2021-05-26 08:00 |
| 42 |  | Совещание 14 | 1h | 2021-06-02 09:00 | 2021-06-02 10:00 |  |  | 44.3d | start no earlier than 2021-06-02 08:00 |
| 43 |  | Совещание 15 | 1h | 2021-06-09 09:00 | 2021-06-09 10:00 |  |  | 39.3d | start no earlier than 2021-06-09 08:00 |
| 44 |  | Совещание 16 | 1h | 2021-06-16 09:00 | 2021-06-16 10:00 |  |  | 35.3d | start no earlier than 2021-06-16 08:00 |
| 45 |  | Совещание 17 | 1h | 2021-06-23 09:00 | 2021-06-23 10:00 |  |  | 30.3d | start no earlier than 2021-06-23 08:00 |
| 46 |  | Совещание 18 | 1h | 2021-06-30 09:00 | 2021-06-30 10:00 |  |  | 25.3d | start no earlier than 2021-06-30 08:00 |
| 47 |  | Совещание 19 | 1h | 2021-07-07 09:00 | 2021-07-07 10:00 |  |  | 20.3d | start no earlier than 2021-07-07 08:00 |
| 48 |  | Совещание 20 | 1h | 2021-07-14 09:00 | 2021-07-14 10:00 |  |  | 15.3d | start no earlier than 2021-07-14 08:00 |

## Version 2 (data date 2021-04-06, saved 2021-03-16, file lab4 — копия.mpp)

Note of the change: add labs

Last finish stays 2021-08-04. Complete tasks 1 → 8.

Changed:

| ID | Task | Start | Finish | Duration | Complete | Total float | Other |
| --- | --- | --- | --- | --- | --- | --- | --- |
| 1 | Начало проекта | 2021-03-01 08:00 A | 2021-03-01 08:00 A |  | 0% → 100% | 5d → none |  |
| 2 | **Создание интерфейса** |  |  |  | 32% → 75% | -11.57d → -11.54d |  |
| 3 | **Разработка дизайна интерфейса** |  |  |  | 38% → 89% | 37.91d → 37.94d |  |
| 5 | Разработка 3D графичиских элементов | 2021-03-09 09:00 A | 2021-03-23 11:00 A |  | 0% → 100% | 37.91d → none |  |
| 6 | Создание заставки | 2021-03-23 11:00 A |  |  | 0% → 70% | 37.91d → 37.94d |  |
| 12 | **Создание ядра GIS** | 2021-03-09 09:00 A |  |  | 0% → 24% | -11.57d → -11.54d |  |
| 13 | Анализ и проектирование ядра | 2021-03-09 09:00 A |  |  | 0% → 87% | -11.57d → -3.25d |  |
| 19 | **Создание руководства пользователя** | 2021-06-04 09:18 → 2021-06-04 09:30 |  | 26.94d → 26.92d |  |  |  |
| 20 | Разработка дизайна руководства | 2021-06-04 09:18 → 2021-06-04 09:30 | 2021-06-16 12:06 → 2021-06-16 16:02 |  |  |  |  |
| 22 | **Создание web - сайта и поддержка** |  | 2021-07-26 10:38 → 2021-07-26 14:14 | 23.6d → 23.93d |  |  |  |
| 24 | Разработка дизайна сайта |  | 2021-07-02 17:38 → 2021-07-05 09:14 (+3d) | 1.3w → 1.31w |  |  |  |
| 25 | Наполнение сайта | 2021-07-02 17:38 → 2021-07-05 09:14 (+3d) | 2021-07-26 10:38 → 2021-07-26 14:14 |  |  |  |  |
| 26 | Тестирование сайта | 2021-07-19 10:38 → 2021-07-19 14:14 | 2021-08-04 12:25 → 2021-08-04 16:01 |  |  |  |  |
| 27 | Сдача сайта в эксплуатацию | 2021-08-04 12:25 → 2021-08-04 16:01 | 2021-08-04 12:25 → 2021-08-04 16:01 |  |  |  |  |
| 28 | **Совещание** | 2021-03-03 09:00 A |  |  | 0% → 25% | 15.3d → 0d |  |
| 29 | Совещание 1 | 2021-03-03 09:00 A | 2021-03-03 10:00 A |  | 0% → 100% | 106.3d → none |  |
| 30 | Совещание 2 | 2021-03-10 09:00 A | 2021-03-10 10:00 A |  | 0% → 100% | 102.3d → none |  |
| 31 | Совещание 3 | 2021-03-17 09:00 A | 2021-03-17 10:00 A |  | 0% → 100% | 97.3d → none |  |
| 32 | Совещание 4 | 2021-03-24 09:00 A | 2021-03-24 10:00 A |  | 0% → 100% | 92.3d → none |  |
| 33 | Совещание 5 | 2021-03-31 09:00 A | 2021-03-31 10:00 A |  | 0% → 100% | 87.3d → none |  |
| 34 | Совещание 6 |  |  |  |  | 82.3d → none | resources 3D аниматор; Web-дизайнер; Ведущий программист; Мультимедиа-корреспондент; Системный аналитик; Технический писатель; Художник-дизайнер → 3D аниматор; Web-дизайнер; Ведущий программист; Мультимедиа-корреспондент; Системный аналитик; Технический писатель; Художник-дизайнер [70%] |
| 35 | Совещание 7 |  |  |  |  | 77.3d → none | resources 3D аниматор; Web-дизайнер; Ведущий программист; Мультимедиа-корреспондент; Системный аналитик; Технический писатель; Художник-дизайнер → 3D аниматор; Web-дизайнер; Ведущий программист; Мультимедиа-корреспондент; Системный аналитик; Технический писатель; Художник-дизайнер [70%] |
| 36 | Совещание 8 |  |  |  |  | 72.3d → none | resources 3D аниматор; Web-дизайнер; Ведущий программист; Мультимедиа-корреспондент; Системный аналитик; Технический писатель; Художник-дизайнер → Web-дизайнер; Ведущий программист; Мультимедиа-корреспондент; Системный аналитик; Технический писатель; Художник-дизайнер [70%] |
| 37 | Совещание 9 |  |  |  |  | 67.3d → none | resources 3D аниматор; Web-дизайнер; Ведущий программист; Мультимедиа-корреспондент; Системный аналитик; Технический писатель; Художник-дизайнер → 3D аниматор; Web-дизайнер; Ведущий программист; Мультимедиа-корреспондент; Системный аналитик; Технический писатель; Художник-дизайнер [70%] |
| 38 | Совещание 10 |  |  |  |  | 63.3d → none | resources 3D аниматор; Web-дизайнер; Ведущий программист; Мультимедиа-корреспондент; Системный аналитик; Технический писатель; Художник-дизайнер → 3D аниматор; Web-дизайнер; Ведущий программист; Мультимедиа-корреспондент; Системный аналитик; Технический писатель; Художник-дизайнер [70%] |
| 39 | Совещание 11 |  |  |  |  | 59.3d → none | resources 3D аниматор; Web-дизайнер; Ведущий программист; Мультимедиа-корреспондент; Системный аналитик; Технический писатель; Художник-дизайнер → 3D аниматор; Web-дизайнер; Ведущий программист; Мультимедиа-корреспондент; Системный аналитик; Технический писатель; Художник-дизайнер [70%] |
| 40 | Совещание 12 |  |  |  |  | 54.3d → none | resources 3D аниматор; Web-дизайнер; Ведущий программист; Мультимедиа-корреспондент; Системный аналитик; Технический писатель; Художник-дизайнер → 3D аниматор; Web-дизайнер; Ведущий программист; Мультимедиа-корреспондент; Системный аналитик; Технический писатель; Художник-дизайнер [70%] |
| 41 | Совещание 13 |  |  |  |  | 49.3d → none | resources 3D аниматор; Web-дизайнер; Ведущий программист; Мультимедиа-корреспондент; Системный аналитик; Технический писатель; Художник-дизайнер → 3D аниматор; Web-дизайнер; Ведущий программист; Мультимедиа-корреспондент; Системный аналитик; Технический писатель; Художник-дизайнер [70%] |
| 42 | Совещание 14 |  |  |  |  | 44.3d → none | resources 3D аниматор; Web-дизайнер; Ведущий программист; Мультимедиа-корреспондент; Системный аналитик; Технический писатель; Художник-дизайнер → 3D аниматор; Web-дизайнер; Ведущий программист; Мультимедиа-корреспондент; Системный аналитик; Технический писатель; Художник-дизайнер [70%] |
| 43 | Совещание 15 |  |  |  |  | 39.3d → none | resources 3D аниматор; Web-дизайнер; Ведущий программист; Мультимедиа-корреспондент; Системный аналитик; Технический писатель; Художник-дизайнер → 3D аниматор; Web-дизайнер; Ведущий программист; Мультимедиа-корреспондент; Системный аналитик; Технический писатель; Художник-дизайнер [70%] |
| 44 | Совещание 16 |  |  |  |  | 35.3d → none | resources 3D аниматор; Web-дизайнер; Ведущий программист; Мультимедиа-корреспондент; Системный аналитик; Технический писатель; Художник-дизайнер → 3D аниматор; Web-дизайнер; Ведущий программист; Мультимедиа-корреспондент; Системный аналитик; Технический писатель; Художник-дизайнер [70%] |
| 45 | Совещание 17 |  |  |  |  | 30.3d → none | resources 3D аниматор; Web-дизайнер; Ведущий программист; Мультимедиа-корреспондент; Системный аналитик; Технический писатель; Художник-дизайнер → 3D аниматор; Web-дизайнер; Ведущий программист; Мультимедиа-корреспондент; Системный аналитик; Технический писатель; Художник-дизайнер [70%] |
| 46 | Совещание 18 |  |  |  |  | 25.3d → none | resources 3D аниматор; Web-дизайнер; Ведущий программист; Мультимедиа-корреспондент; Системный аналитик; Технический писатель; Художник-дизайнер → 3D аниматор; Web-дизайнер; Ведущий программист; Мультимедиа-корреспондент; Системный аналитик; Технический писатель; Художник-дизайнер [70%] |
| 47 | Совещание 19 |  |  |  |  | 20.3d → none | resources 3D аниматор; Web-дизайнер; Ведущий программист; Мультимедиа-корреспондент; Системный аналитик; Технический писатель; Художник-дизайнер → 3D аниматор; Web-дизайнер; Ведущий программист; Мультимедиа-корреспондент; Системный аналитик; Технический писатель; Художник-дизайнер [70%] |
| 48 | Совещание 20 |  |  |  |  | 15.3d → none | resources 3D аниматор; Web-дизайнер; Ведущий программист; Мультимедиа-корреспондент; Системный аналитик; Технический писатель; Художник-дизайнер → 3D аниматор; Web-дизайнер; Ведущий программист; Мультимедиа-корреспондент; Системный аналитик; Технический писатель; Художник-дизайнер [70%] |

## Version 3 (data date 2021-04-06, saved 2021-03-16, file lab4 — копия — копия.mpp)

Note of the change: add labs

Last finish 2021-08-04 → 2021-07-29 (-6d).

Changed:

| ID | Task | Start | Finish | Duration | Complete | Total float |
| --- | --- | --- | --- | --- | --- | --- |
| 2 | **Создание интерфейса** |  | 2021-07-06 14:50 → 2021-06-29 14:50 (-7d) | 82.61d → 77.61d | 75% → 84% | -11.54d → -6.54d |
| 7 | Программирование интерфейса |  | 2021-07-06 14:50 → 2021-06-29 14:50 (-7d) | 1.5w → 0.5w |  | -11.54d → -6.54d |
| 8 | **Построение базы объектов** |  | 2021-08-03 12:47 → 2021-07-22 17:47 (-12d) | 92.1d → 84.6d | 10% → 11% | 1.28d → 4.25d |
| 10 | Программирование средств обработки базы объектов |  | 2021-05-07 12:47 → 2021-04-29 12:47 (-8d) | 1.55w → 0.55w |  | 1.28d → 4.25d |
| 11 | Наполнение базы объектов | 2021-05-07 12:47 → 2021-04-29 12:47 (-8d) | 2021-08-03 12:47 → 2021-07-22 17:47 (-12d) | 12w → 11.5w |  | 1.28d → 4.25d |
| 18 | Создание справочной системы | 2021-07-13 17:50 → 2021-07-06 17:50 (-7d) | 2021-07-28 09:50 → 2021-07-21 10:50 (-7d) |  |  | 5.65d → 5.99d |
| 19 | **Создание руководства пользователя** |  | 2021-07-13 17:50 → 2021-07-06 17:50 (-7d) | 26.92d → 21.92d |  |  |
| 21 | Написание руководства пользователя | 2021-06-22 14:50 → 2021-06-15 14:50 (-7d) | 2021-07-13 17:50 → 2021-07-06 17:50 (-7d) |  |  | 0d → 0.34d |
| 22 | **Создание web - сайта и поддержка** | 2021-06-22 14:50 → 2021-06-15 14:50 (-7d) | 2021-07-26 14:14 → 2021-07-19 15:14 (-7d) | 23.93d → 24.05d |  | 0d → 0.34d |
| 23 | Разработка структуры сайта | 2021-06-22 14:50 → 2021-06-15 14:50 (-7d) | 2021-06-23 15:50 → 2021-06-16 15:50 (-7d) |  |  | 0d → 0.34d |
| 24 | Разработка дизайна сайта | 2021-06-23 15:50 → 2021-06-16 15:50 (-7d) | 2021-07-05 09:14 → 2021-06-28 09:14 (-7d) |  |  | 0d → 0.34d |
| 25 | Наполнение сайта | 2021-07-05 09:14 → 2021-06-28 09:14 (-7d) | 2021-07-26 14:14 → 2021-07-19 15:14 (-7d) |  |  | 0d → 0.34d |
| 26 | Тестирование сайта | 2021-07-19 14:14 → 2021-07-13 09:00 (-6d) | 2021-08-04 16:01 → 2021-07-29 10:46 (-6d) |  |  |  |
| 27 | Сдача сайта в эксплуатацию | 2021-08-04 16:01 → 2021-07-29 10:46 (-6d) | 2021-08-04 16:01 → 2021-07-29 10:46 (-6d) |  |  |  |
