How a schedule from MS Project changed from version to version. A marks actual dates.

## Version 1 (data date 2021-04-06, saved 2021-03-13, file lab4 — копия.mpp)

Note of the change: add labs

| ID | WBS | Task | Duration | Start | Finish | Predecessors | Complete | Total float | Constraint |
| --- | --- | --- | --- | --- | --- | --- | --- | --- | --- |
| 1 |  | Начало проекта | 0w | 2021-03-01 08:00 A | 2021-03-01 08:00 A |  | 100% |  |  |
| 2 | 2 | **Создание интерфейса** | 74.51d | 2021-03-01 09:00 A | 2021-06-17 14:03 | 1 | 64% | 2.49d |  |
| 3 | 2.1 | **Разработка дизайна интерфейса** | 50.75d | 2021-03-01 09:00 A | 2021-05-13 16:00 |  | 77% | 18.75d |  |
| 4 |  | Разработка 2D графических элементов | 3w | 2021-03-01 09:00 A | 2021-03-24 17:24 A |  | 100% |  |  |
| 5 |  | Разработка 3D графичиских элементов | 2w | 2021-03-01 09:00 A | 2021-03-16 11:00 A | 4SS | 100% |  |  |
| 6 |  | Создание заставки | 3w | 2021-03-16 11:00 A | 2021-05-13 16:00 | 5 | 38% | 18.75d |  |
| 7 |  | Программирование интерфейса | 1.5w | 2021-06-07 09:03 | 2021-06-17 14:03 | 3, 12 |  | 2.49d |  |
| 8 | 3 | **Построение базы объектов** | 79d | 2021-03-23 12:00 A | 2021-07-15 12:00 |  | 11% | 9.85d |  |
| 9 |  | Анализ и построение структуры базы объектов | 2w | 2021-03-23 12:00 A | 2021-04-06 15:00 |  | 80% | 0.38d |  |
| 10 |  | Программирование средств обработки базы объектов | 1.5w | 2021-04-06 15:00 A | 2021-04-19 12:00 | 9 | 5% | 9.85d |  |
| 11 |  | Наполнение базы объектов | 12w | 2021-04-19 12:00 | 2021-07-15 12:00 | 10 |  | 9.85d |  |
| 12 | 4 | **Создание ядра GIS** | 62.01d | 2021-03-09 08:00 A | 2021-06-07 09:03 |  | 39% | 2.49d |  |
| 13 |  | Анализ и проектирование ядра | 3w | 2021-03-09 08:00 A | 2021-03-30 12:00 A |  | 100% |  |  |
| 14 |  | Создание модели ядра | 2.72w | 2021-03-23 12:00 A | 2021-04-12 09:49 | 13 | 78% | 2.49d |  |
| 15 |  | Тестирование модели ядра | 0.25w | 2021-04-12 09:49 | 2021-04-13 11:49 | 14 |  | 2.49d |  |
| 16 |  | Создание рабочей версии ядра | 7.31w | 2021-04-13 11:49 | 2021-06-07 09:03 | 15 |  | 2.49d |  |
| 17 |  | Создание мультимедиа - наполнения | 6w | 2021-05-13 16:00 | 2021-06-28 13:00 | 3 |  | 22.72d |  |
| 18 |  | Создание справочной системы | 2w | 2021-06-28 17:20 | 2021-07-13 10:20 | 7 |  | 12.05d |  |
| 19 | 7 | **Создание руководства пользователя** | 17.38d | 2021-06-02 14:20 | 2021-06-28 17:20 | 7FS-10d |  | 2.45d |  |
| 20 |  | Разработка дизайна руководства | 1w | 2021-06-02 14:20 | 2021-06-11 16:08 |  |  | 2.45d |  |
| 21 |  | Написание руководства пользователя | 3w | 2021-06-04 14:20 | 2021-06-28 17:20 | 20SS+2d |  | 2.45d |  |
| 22 | 8 | **Создание web - сайта и поддержка** | 28d | 2021-06-04 14:20 | 2021-07-15 14:22 |  |  | 2.45d |  |
| 23 |  | Разработка структуры сайта | 1d | 2021-06-04 14:20 | 2021-06-07 14:20 | 21SS |  | 2.45d |  |
| 24 |  | Разработка дизайна сайта | 1.88w | 2021-06-07 14:20 | 2021-06-24 10:22 | 23 |  | 2.45d |  |
| 25 |  | Наполнение сайта | 3w | 2021-06-24 10:22 | 2021-07-15 14:22 | 24 |  | 2.45d |  |
| 26 |  | Тестирование сайта | 2.44w | 2021-07-13 09:00 | 2021-07-29 10:46 | 22FS-1w |  | 0d | start no earlier than 2021-07-13 09:00 |
| 27 |  | Сдача сайта в эксплуатацию | 0w | 2021-07-29 10:46 | 2021-07-29 10:46 | 26 |  | 0d |  |
| 28 | 11 | **Совещание** | 91.12d | 2021-03-03 09:00 A | 2021-07-14 10:00 |  | 25% | 11.1d |  |
| 29 |  | Совещание 1 | 1h | 2021-03-03 09:00 A | 2021-03-03 10:00 A |  | 100% |  | start no earlier than 2021-03-03 08:00 |
| 30 |  | Совещание 2 | 1h | 2021-03-10 09:00 A | 2021-03-10 10:00 A |  | 100% |  | start no earlier than 2021-03-10 08:00 |
| 31 |  | Совещание 3 | 1h | 2021-03-17 09:00 A | 2021-03-17 10:00 A |  | 100% |  | start no earlier than 2021-03-17 08:00 |
| 32 |  | Совещание 4 | 1h | 2021-03-24 09:00 A | 2021-03-24 10:00 A |  | 100% |  | start no earlier than 2021-03-24 08:00 |
| 33 |  | Совещание 5 | 1h | 2021-03-31 09:00 A | 2021-03-31 10:00 A |  | 100% |  | start no earlier than 2021-03-31 08:00 |
| 34 |  | Совещание 6 | 1h | 2021-04-07 09:00 | 2021-04-07 10:00 |  |  | 78.1d | start no earlier than 2021-04-07 08:00 |
| 35 |  | Совещание 7 | 1h | 2021-04-14 09:00 | 2021-04-14 10:00 |  |  | 73.1d | start no earlier than 2021-04-14 08:00 |
| 36 |  | Совещание 8 | 1h | 2021-04-21 09:00 | 2021-04-21 10:00 |  |  | 68.1d | start no earlier than 2021-04-21 08:00 |
| 37 |  | Совещание 9 | 1h | 2021-04-28 09:00 | 2021-04-28 10:00 |  |  | 63.1d | start no earlier than 2021-04-28 08:00 |
| 38 |  | Совещание 10 | 1h | 2021-05-05 09:00 | 2021-05-05 10:00 |  |  | 59.1d | start no earlier than 2021-05-05 08:00 |
| 39 |  | Совещание 11 | 1h | 2021-05-12 09:00 | 2021-05-12 10:00 |  |  | 55.1d | start no earlier than 2021-05-12 08:00 |
| 40 |  | Совещание 12 | 1h | 2021-05-19 09:00 | 2021-05-19 10:00 |  |  | 50.1d | start no earlier than 2021-05-19 08:00 |
| 41 |  | Совещание 13 | 1h | 2021-05-26 09:00 | 2021-05-26 10:00 |  |  | 45.1d | start no earlier than 2021-05-26 08:00 |
| 42 |  | Совещание 14 | 1h | 2021-06-02 09:00 | 2021-06-02 10:00 |  |  | 40.1d | start no earlier than 2021-06-02 08:00 |
| 43 |  | Совещание 15 | 1h | 2021-06-09 09:00 | 2021-06-09 10:00 |  |  | 35.1d | start no earlier than 2021-06-09 08:00 |
| 44 |  | Совещание 16 | 1h | 2021-06-16 09:00 | 2021-06-16 10:00 |  |  | 31.1d | start no earlier than 2021-06-16 08:00 |
| 45 |  | Совещание 17 | 1h | 2021-06-23 09:00 | 2021-06-23 10:00 |  |  | 26.1d | start no earlier than 2021-06-23 08:00 |
| 46 |  | Совещание 18 | 1h | 2021-06-30 09:00 | 2021-06-30 10:00 |  |  | 21.1d | start no earlier than 2021-06-30 08:00 |
| 47 |  | Совещание 19 | 1h | 2021-07-07 09:00 | 2021-07-07 10:00 |  |  | 16.1d | start no earlier than 2021-07-07 08:00 |
| 48 |  | Совещание 20 | 1h | 2021-07-14 09:00 | 2021-07-14 10:00 |  |  | 11.1d | start no earlier than 2021-07-14 08:00 |

## Version 2 (data date 2021-04-06, saved 2021-03-16, file lab4.mpp)

Note of the change: add labs

Last finish 2021-07-29 → 2021-08-10 (+12d). Complete tasks 9 → 2.

Changed:

| ID | Task | Start | Finish | Duration | Complete | Total float | Other |
| --- | --- | --- | --- | --- | --- | --- | --- |
| 1 | Начало проекта | 2021-03-01 08:00 A → 2021-03-01 08:00 | 2021-03-01 08:00 A → 2021-03-01 08:00 |  | 100% → 0% | none → 26.29d |  |
| 2 | **Создание интерфейса** | 2021-03-01 09:00 A → 2021-03-01 09:00 | 2021-06-17 14:03 → 2021-07-01 14:03 (+14d) | 74.51d → 84.51d | 64% → 0% | 2.49d → 0.04d |  |
| 3 | **Разработка дизайна интерфейса** | 2021-03-01 09:00 A → 2021-03-01 09:00 |  |  | 77% → 0% | 18.75d → 26.29d |  |
| 4 | Разработка 2D графических элементов | 2021-03-01 09:00 A → 2021-03-01 09:00 | 2021-03-24 17:24 A → 2021-03-24 17:24 |  | 100% → 0% | none → 26.29d |  |
| 5 | Разработка 3D графичиских элементов | 2021-03-01 09:00 A → 2021-03-01 09:00 | 2021-03-16 11:00 A → 2021-03-16 11:00 |  | 100% → 0% | none → 26.29d |  |
| 6 | Создание заставки | 2021-03-16 11:00 A → 2021-03-16 11:00 |  |  | 38% → 0% | 18.75d → 26.29d |  |
| 7 | Программирование интерфейса | 2021-06-07 09:03 → 2021-06-22 09:03 (+15d) | 2021-06-17 14:03 → 2021-07-01 14:03 (+14d) |  |  | 2.49d → 0.04d |  |
| 8 | **Построение базы объектов** | 2021-03-23 12:00 A → 2021-03-23 17:00 | 2021-07-15 12:00 → 2021-07-23 15:00 (+8d) | 79d → 84.75d | 11% → 0% | 9.85d → 11.78d |  |
| 9 | Анализ и построение структуры базы объектов | 2021-03-23 12:00 A → 2021-03-23 17:00 | 2021-04-06 15:00 → 2021-04-13 15:00 (+7d) |  | 80% → 0% | 0.38d → 11.78d |  |
| 10 | Программирование средств обработки базы объектов | 2021-04-06 15:00 A → 2021-04-13 15:00 (+7d) | 2021-04-19 12:00 → 2021-04-27 15:00 (+8d) |  | 5% → 0% | 9.85d → 11.78d |  |
| 11 | Наполнение базы объектов | 2021-04-19 12:00 → 2021-04-27 15:00 (+8d) | 2021-07-15 12:00 → 2021-07-23 15:00 (+8d) |  |  | 9.85d → 11.78d |  |
| 12 | **Создание ядра GIS** |  | 2021-06-07 09:03 → 2021-06-22 09:03 (+15d) | 62.01d → 72.01d | 39% → 21% | 2.49d → 0.04d |  |
| 13 | Анализ и проектирование ядра |  | 2021-03-30 12:00 A → 2021-03-30 11:00 A |  |  |  |  |
| 14 | Создание модели ядра | 2021-03-23 12:00 A → 2021-03-30 11:00 (+7d) | 2021-04-12 09:49 → 2021-04-26 09:49 (+14d) | 2.72w → 3.72w | 78% → 0% | 2.49d → 0.04d | constraint none → start no earlier than 2021-03-30 11:00 |
| 15 | Тестирование модели ядра | 2021-04-12 09:49 → 2021-04-26 09:49 (+14d) | 2021-04-13 11:49 → 2021-04-27 11:49 (+14d) |  |  | 2.49d → 0.04d |  |
| 16 | Создание рабочей версии ядра | 2021-04-13 11:49 → 2021-04-27 11:49 (+14d) | 2021-06-07 09:03 → 2021-06-22 09:03 (+15d) |  |  | 2.49d → 0.04d |  |
| 18 | Создание справочной системы | 2021-06-28 17:20 → 2021-07-13 11:20 (+15d) | 2021-07-13 10:20 → 2021-07-27 16:20 (+14d) |  |  | 12.05d → 9.61d |  |
| 19 | **Создание руководства пользователя** | 2021-06-02 14:20 → 2021-06-17 14:20 (+15d) | 2021-06-28 17:20 → 2021-07-13 11:20 (+15d) | 17.38d → 17.75d |  | 2.45d → 0d |  |
| 20 | Разработка дизайна руководства | 2021-06-02 14:20 → 2021-06-17 14:20 (+15d) | 2021-06-11 16:08 → 2021-06-28 17:21 (+17d) |  |  | 2.45d → 0d |  |
| 21 | Написание руководства пользователя | 2021-06-04 14:20 → 2021-06-21 14:20 (+17d) | 2021-06-28 17:20 → 2021-07-13 11:20 (+15d) |  |  | 2.45d → 0d |  |
| 22 | **Создание web - сайта и поддержка** | 2021-06-04 14:20 → 2021-06-21 14:20 (+17d) | 2021-07-15 14:22 → 2021-07-30 10:25 (+15d) | 28d → 28.64d |  | 2.45d → 0d |  |
| 23 | Разработка структуры сайта | 2021-06-04 14:20 → 2021-06-21 14:20 (+17d) | 2021-06-07 14:20 → 2021-06-22 14:20 (+15d) |  |  | 2.45d → 0d |  |
| 24 | Разработка дизайна сайта | 2021-06-07 14:20 → 2021-06-22 14:20 (+15d) | 2021-06-24 10:22 → 2021-07-08 14:25 (+14d) |  |  | 2.45d → 0d |  |
| 25 | Наполнение сайта | 2021-06-24 10:22 → 2021-07-08 14:25 (+14d) | 2021-07-15 14:22 → 2021-07-30 10:25 (+15d) |  |  | 2.45d → 0d |  |
| 26 | Тестирование сайта | 2021-07-13 09:00 → 2021-07-23 10:25 (+10d) | 2021-07-29 10:46 → 2021-08-10 12:12 (+12d) |  |  |  |  |
| 27 | Сдача сайта в эксплуатацию | 2021-07-29 10:46 → 2021-08-10 12:12 (+12d) | 2021-07-29 10:46 → 2021-08-10 12:12 (+12d) |  |  |  |  |
| 28 | **Совещание** |  |  |  | 25% → 4% | 11.1d → 19.28d |  |
| 29 | Совещание 1 | 2021-03-03 09:00 A → 2021-03-03 09:00 | 2021-03-03 10:00 A → 2021-03-03 10:00 |  | 100% → 0% | none → 102.1d |  |
| 30 | Совещание 2 | 2021-03-10 09:00 A → 2021-03-04 09:00 (-6d) | 2021-03-10 10:00 A → 2021-03-10 10:00 | 1h → 3h | 100% → 0% | none → 106.28d | constraint start no earlier than 2021-03-10 08:00 → start no earlier than 2021-03-04 09:00 |
| 31 | Совещание 3 | 2021-03-17 09:00 A → 2021-03-09 09:00 (-8d) | 2021-03-17 10:00 A → 2021-03-17 10:00 | 1h → 2h | 100% → 0% | none → 101.28d | constraint start no earlier than 2021-03-17 08:00 → start no earlier than 2021-03-09 09:00 |
| 33 | Совещание 5 | 2021-03-31 09:00 A → 2021-03-31 09:00 | 2021-03-31 10:00 A → 2021-03-31 10:00 |  | 100% → 0% | none → 83.1d |  |
